# NCICBSecurityService

Schedule from MS Project, 2004-08-02 to 2005-03-07.
Home

## Calendars

- Standard: Mon-Fri 08:00-12:00, 13:00-17:00; Sat-Sun off.

## Resources

| Resource |
| --- |
| Vinay |
| Resource 1 |
| Brian |

## Schedule

| ID | WBS | Task | Duration | Start | Finish | Predecessors | Total slack | Free slack | Constraint | Work |
| --- | --- | --- | --- | --- | --- | --- | --- | --- | --- | --- |
| 1 | 1 | **Security Module (Release One)** | 156d | 2004-08-02 | 2005-03-07 |  | 0d |  |  | 2864h |
| 2 | 1.1 | **Inception** | 38d | 2004-08-02 | 2004-09-22 |  | 118d |  |  |  |
| 3 | 1.1.1 | Phase I Evaluation | 7d | 2004-08-02 | 2004-08-10 |  | 149d |  | start no earlier than 2004-08-02 |  |
| 4 | 1.1.2 | Interview NCICB Team Leads | 12d | 2004-08-09 | 2004-08-24 |  | 123d | 5d | start no earlier than 2004-08-09 |  |
| 5 | 1.1.3 | Scope and Vision Document | 10d | 2004-08-30 | 2004-09-10 |  | 126d |  | start no earlier than 2004-08-30 |  |
| 6 | 1.1.4 | Supplentary Specifications | 3d | 2004-09-01 | 2004-09-03 | 4 | 118d | 0d | start no earlier than 2004-09-01 |  |
| 7 | 1.1.5 | Fuctional Specifications | 5d | 2004-09-06 | 2004-09-10 | 6 | 118d | 0d |  |  |
| 8 | 1.1.6 | Use Case Model | 5d | 2004-09-13 | 2004-09-17 | 7 | 118d | 0d |  |  |
| 9 | 1.1.7 | Identify Risk List | 3d | 2004-09-20 | 2004-09-22 | 8 | 118d |  |  |  |
| 10 | 1.2 | **Elaboration** | 22d | 2004-09-27 | 2004-10-26 |  | 94d |  |  |  |
| 11 | 1.2.1 | **Iteration I** | 6d | 2004-09-27 | 2004-10-04 |  | 110d |  |  |  |
| 12 | 1.2.1.1 | Level 1 - 2 Use Cases | 5d | 2004-09-27 | 2004-10-01 |  | 111d |  |  |  |
| 13 | 1.2.1.2 | Risk List Priority | 3d | 2004-09-27 | 2004-09-29 |  | 113d |  |  |  |
| 14 | 1.2.1.3 | Detailed Iteration Release Plan | 5d | 2004-09-27 | 2004-10-01 |  | 111d |  |  |  |
| 15 | 1.2.1.4 | **Finalize Requirements** | 2d | 2004-10-01 | 2004-10-04 |  | 110d |  |  |  |
| 16 | 1.2.1.4.1 | Stakeholder Sign Off | 1d | 2004-10-01 | 2004-10-01 |  | 110d | 0d | start no earlier than 2004-10-01 |  |
| 17 | 1.2.1.4.2 | User Sign Off | 1d | 2004-10-04 | 2004-10-04 | 16 | 110d |  | start no earlier than 2004-10-04 |  |
| 18 | 1.2.2 | **Iteration II** | 16d | 2004-10-05 | 2004-10-26 |  | 94d |  |  |  |
| 19 | 1.2.2.1 | Software Architecture Document | 15d | 2004-10-05 | 2004-10-25 |  | 94d | 0d | start no earlier than 2004-10-05 |  |
| 20 | 1.2.2.2 | Prioritize Risk List | 1d | 2004-10-26 | 2004-10-26 | 19 | 94d |  |  |  |
| 21 | 1.3 | **Construction** | 72d | 2004-10-18 | 2005-01-25 |  | 29d |  |  | 2864h |
| 22 | 1.3.1 | **Iteration I** | 25d | 2004-10-26 | 2004-11-29 |  | 70d |  |  |  |
| 23 | 1.3.1.1 | Iteration Plan | 1d | 2004-10-26 | 2004-10-26 |  | 94d |  | start no earlier than 2004-10-26 |  |
| 24 | 1.3.1.2 | **Authentication** | 24d | 2004-10-27 | 2004-11-29 |  | 70d |  |  |  |
| 25 | 1.3.1.2.1 | **Design** | 4d | 2004-10-27 | 2004-11-01 |  | 76d |  |  |  |
| 26 | 1.3.1.2.1.1 | **Documentation** | 4d | 2004-10-27 | 2004-11-01 |  | 76d |  |  |  |
| 27 | 1.3.1.2.1.1.1 | Level 3 - 4 Use Cases | 1d | 2004-10-27 | 2004-10-27 |  | 93d |  | start no earlier than 2004-10-27 |  |
| 28 | 1.3.1.2.1.1.2 | Use Case Model | 1d | 2004-10-27 | 2004-10-27 |  | 91d | 0d | start no earlier than 2004-10-27 |  |
| 29 | 1.3.1.2.1.1.3 | UML Sequence Diagram | 1d | 2004-10-28 | 2004-10-28 | 28 | 91d | 0d |  |  |
| 30 | 1.3.1.2.1.1.4 | UML Class Diagram | 1d | 2004-10-29 | 2004-10-29 | 29 | 91d |  |  |  |
| 31 | 1.3.1.2.1.1.5 | UML Activity Diagram | 1d | 2004-10-29 | 2004-10-29 |  | 74d | 0d | start no earlier than 2004-10-29 |  |
| 32 | 1.3.1.2.1.1.6 | Design Review | 1d | 2004-11-01 | 2004-11-01 | 31 | 74d | 4d |  |  |

| ID | WBS | Task | Duration | Start | Finish | Predecessors | Total slack | Free slack | Constraint |
| --- | --- | --- | --- | --- | --- | --- | --- | --- | --- |
| 33 | 1.3.1.2.2 | **Implementation** | 16d | 2004-11-01 | 2004-11-22 |  | 75d |  |  |
| 34 | 1.3.1.2.2.1 | Data Model Enhancement | 5d | 2004-11-01 | 2004-11-05 |  | 86d |  | start no earlier than 2004-11-01 |
| 35 | 1.3.1.2.2.2 | **JAAS Authentication Modules** | 11d | 2004-11-08 | 2004-11-22 |  | 70d |  |  |
| 36 | 1.3.1.2.2.2.1 | LDAP | 5d | 2004-11-08 | 2004-11-12 | 32 | 70d | 0d | finish no earlier than 2004-11-12 |
| 37 | 1.3.1.2.2.2.2 | RBDMS | 5d | 2004-11-08 | 2004-11-12 | 32 | 70d | 0d | finish no earlier than 2004-11-12 |
| 38 | 1.3.1.2.2.2.3 | Junit Test Development | 4d | 2004-11-09 | 2004-11-12 |  | 70d | 0d | finish no earlier than 2004-11-12 |
| 39 | 1.3.1.2.2.2.4 | Code Reviews | 6d | 2004-11-15 | 2004-11-22 | 36, 37, 38 | 70d | 0d | finish no earlier than 2004-11-15 |
| 40 | 1.3.1.2.3 | **Unit Testing** | 5d | 2004-11-23 | 2004-11-29 |  | 70d |  |  |
| 41 | 1.3.1.2.3.1 | Perform Testing | 1d | 2004-11-23 | 2004-11-23 | 39 | 70d | 0d | start no earlier than 2004-11-15 |
| 42 | 1.3.1.2.3.2 | Evaluate Results | 2d | 2004-11-24 | 2004-11-25 | 41 | 70d | 0d | start no earlier than 2004-11-16 |
| 43 | 1.3.1.2.3.3 | Integration Testing | 1d | 2004-11-26 | 2004-11-26 | 42 | 70d | 0d |  |
| 44 | 1.3.1.2.3.4 | User Working Group Review | 1d | 2004-11-29 | 2004-11-29 | 43 | 70d |  |  |
| 45 | 1.3.2 | **Iteration II** | 22d | 2004-11-22 | 2004-12-21 |  | 54d |  |  |
| 46 | 1.3.2.1 | Iteration Plan | 1d | 2004-11-30 | 2004-11-30 |  | 68d | 0d | start no earlier than 2004-11-30 |
| 47 | 1.3.2.2 | **Authorization** | 22d | 2004-11-22 | 2004-12-21 |  | 54d |  |  |
| 48 | 1.3.2.2.1 | **Design** | 15d | 2004-11-22 | 2004-12-10 |  | 61d |  |  |
| 49 | 1.3.2.2.1.1 | **Documentation** | 15d | 2004-11-22 | 2004-12-10 |  | 61d |  |  |
| 50 | 1.3.2.2.1.1.1 | Level 3 - 4 Use Cases | 1d | 2004-12-01 | 2004-12-01 |  | 68d |  | start no earlier than 2004-12-01 |
| 51 | 1.3.2.2.1.1.2 | Use Case Model | 1d | 2004-12-01 | 2004-12-01 | 46 | 68d |  | start no earlier than 2004-11-22 |
| 52 | 1.3.2.2.1.1.3 | UML Sequence Diagram | 1d | 2004-11-22 | 2004-11-22 |  | 74d | 0d | start no earlier than 2004-11-22 |
| 53 | 1.3.2.2.1.1.4 | UML Class Diagram | 1d | 2004-11-23 | 2004-11-23 | 52 | 74d |  |  |
| 54 | 1.3.2.2.1.1.5 | UML Activity Diagram | 1d | 2004-11-23 | 2004-11-23 |  | 73d | 0d | start no earlier than 2004-11-23 |
| 55 | 1.3.2.2.1.1.6 | Design Review | 1d | 2004-11-24 | 2004-11-24 | 54 | 73d |  |  |
| 56 | 1.3.2.2.1.1.7 | UML Model for EVS | 4d | 2004-12-07 | 2004-12-10 |  | 61d |  | start no earlier than 2004-12-07 |

| ID | WBS | Task | Duration | Start | Finish | Predecessors | Total slack | Free slack | Constraint | Resources | Work |
| --- | --- | --- | --- | --- | --- | --- | --- | --- | --- | --- | --- |
| 57 | 1.3.2.2.2 | **Implementation** | 15d | 2004-11-25 | 2004-12-15 |  | 58d |  |  |  |  |
| 58 | 1.3.2.2.2.1 | Authorization XML Schema | 10d | 2004-11-25 | 2004-12-08 |  | 63d |  | start no earlier than 2004-11-25 |  |  |
| 59 | 1.3.2.2.2.2 | **Authorization API** | 15d | 2004-11-25 | 2004-12-15 |  | 58d |  |  |  |  |
| 60 | 1.3.2.2.2.2.1 | Enhance Phase I Object Model | 15d | 2004-11-25 | 2004-12-15 |  | 58d |  | start no earlier than 2004-11-25 |  |  |
| 61 | 1.3.2.2.2.2.2 | Junit Test Development | 3d | 2004-12-13 | 2004-12-15 |  | 58d |  | start no earlier than 2004-12-13 |  |  |
| 62 | 1.3.2.2.3 | **Unit Testing** | 5d | 2004-12-15 | 2004-12-21 |  | 54d |  |  |  |  |
| 63 | 1.3.2.2.3.1 | Unit Testing | 1d | 2004-12-15 | 2004-12-15 |  | 54d | 0d | start no earlier than 2004-12-15 |  |  |
| 64 | 1.3.2.2.3.2 | Evaluate Results | 2d | 2004-12-16 | 2004-12-17 | 63 | 54d | 0d |  |  |  |
| 65 | 1.3.2.2.3.3 | Integration Testing | 1d | 2004-12-20 | 2004-12-20 | 64 | 54d | 0d |  |  |  |
| 66 | 1.3.2.2.3.4 | User Working Group Review | 1d | 2004-12-21 | 2004-12-21 | 65 | 54d |  |  |  |  |
| 67 | 1.3.3 | **Iteration III** | 26d | 2004-12-21 | 2005-01-25 |  | 29d |  |  |  |  |
| 68 | 1.3.3.1 | Iteration Plan | 1d | 2004-12-21 | 2004-12-21 |  | 34d | 0d | start no earlier than 2004-12-21 |  |  |
| 69 | 1.3.3.2 | **Prototype (Reference Implementation)** | 25d | 2004-12-22 | 2005-01-25 |  | 29d |  |  |  |  |
| 70 | 1.3.3.2.1 | **Implementation** | 20d | 2004-12-22 | 2005-01-18 |  | 34d |  |  |  |  |
| 71 | 1.3.3.2.1.1 | **Demo Application** | 20d | 2004-12-22 | 2005-01-18 |  | 34d |  |  |  |  |
| 72 | 1.3.3.2.1.1.1 | Integrate Authentication | 5d | 2004-12-22 | 2004-12-28 | 68 | 34d | 0d | start no earlier than 2004-12-22 |  |  |
| 73 | 1.3.3.2.1.1.2 | Integrate Authorization | 5d | 2004-12-29 | 2005-01-04 | 72 | 34d | 0d |  |  |  |
| 74 | 1.3.3.2.1.1.3 | User Interface | 10d | 2005-01-05 | 2005-01-18 | 73 | 34d |  |  |  |  |
| 75 | 1.3.3.2.2 | **Documentation** | 5d | 2005-01-19 | 2005-01-25 |  | 29d |  |  |  |  |
| 76 | 1.3.3.2.2.1 | User Guide | 5d | 2005-01-19 | 2005-01-25 |  | 29d |  | start no earlier than 2005-01-19 |  |  |
| 77 | 1.3.4 | **Iteration IV** | 65d | 2004-10-18 | 2005-01-14 |  | 36d |  |  | Brian | 2864h |
| 78 | 1.3.4.1 | Iteration Plan | 2d | 2004-10-18 | 2004-10-19 |  | 96d | 0d | start no earlier than 2004-10-18 | Brian | 16h |
| 79 | 1.3.4.2 | **User Provisioning** | 63d | 2004-10-20 | 2005-01-14 |  | 36d |  |  | Brian | 2328h |
| 80 | 1.3.4.2.1 | **Design** | 45d | 2004-10-20 | 2004-12-21 |  | 54d |  |  | Brian | 768h |
| 81 | 1.3.4.2.1.1 | **Documentation** | 45d | 2004-10-20 | 2004-12-21 |  | 54d |  |  | Brian | 408h |
| 82 | 1.3.4.2.1.1.1 | Level 3 - 4 Use Cases | 1d | 2004-10-20 | 2004-10-20 | 78 | 96d | 0d | start no earlier than 2004-10-20 | Brian | 8h |
| 83 | 1.3.4.2.1.1.2 | Use Case Model | 1d | 2004-12-17 | 2004-12-17 | 78 | 54d | 0d | start no earlier than 2004-12-17 | Brian | 8h |
| 84 | 1.3.4.2.1.1.3 | UML Sequence Diagram | 1d | 2004-12-20 | 2004-12-20 | 83 | 54d | 0d |  | Brian | 8h |
| 85 | 1.3.4.2.1.1.4 | UML Class Diagram | 1d | 2004-12-21 | 2004-12-21 | 84 | 54d |  |  | Brian | 8h |
| 86 | 1.3.4.2.1.1.5 | UML Activity Diagram | 1d | 2004-10-21 | 2004-10-21 | 82 | 96d | 0d |  | Brian | 8h |
| 87 | 1.3.4.2.1.1.6 | Design Review | 1d | 2004-10-22 | 2004-10-22 | 86 | 96d |  |  | Brian | 8h |

| ID | WBS | Task | Duration | Start | Finish | Predecessors | Total slack | Free slack | Constraint | Resources | Work |
| --- | --- | --- | --- | --- | --- | --- | --- | --- | --- | --- | --- |
| 88 | 1.3.4.2.2 | **Implementation** | 39d | 2004-10-25 | 2004-12-16 |  | 57d |  |  | Brian | 864h |
| 89 | 1.3.4.2.2.1 | Add Users | 5d | 2004-10-25 | 2004-10-29 |  | 57d | 0d | start no earlier than 2004-10-25 | Brian | 40h |
| 90 | 1.3.4.2.2.2 | Modify Users | 3d | 2004-11-01 | 2004-11-03 | 89 | 57d | 0d | start no earlier than 2004-11-01 | Brian | 24h |
| 91 | 1.3.4.2.2.3 | Create Roles | 5d | 2004-11-04 | 2004-11-10 | 90 | 57d | 0d |  | Brian | 40h |
| 92 | 1.3.4.2.2.4 | Assign Roles | 3d | 2004-11-11 | 2004-11-15 | 91 | 57d | 0d | start no earlier than 2004-11-11 | Brian | 24h |
| 93 | 1.3.4.2.2.5 | Assign Privileges | 3d | 2004-11-16 | 2004-11-18 | 92 | 57d | 0d |  | Brian | 24h |
| 94 | 1.3.4.2.2.6 | Create Protection Elements | 3d | 2004-11-19 | 2004-11-23 | 93 | 57d | 0d |  | Brian | 24h |
| 95 | 1.3.4.2.2.7 | Assign Protection Elements | 3d | 2004-11-24 | 2004-11-26 | 94 | 57d | 0d |  | Brian | 24h |
| 96 | 1.3.4.2.2.8 | Web Interface | 12d | 2004-11-29 | 2004-12-14 | 95 | 57d | 0d | start no earlier than 2004-11-25 | Brian | 96h |
| 97 | 1.3.4.2.2.9 | Validation | 2d | 2004-12-15 | 2004-12-16 | 96 | 57d |  |  | Brian | 16h |
| 98 | 1.3.4.2.2.10 | Code Reviews | 30d | 2004-11-05 | 2004-12-16 |  | 50d | 0d | finish no earlier than 2004-12-16 | Brian | 240h |
| 99 | 1.3.4.2.3 | **Unit Testing** | 7d | 2004-12-17 | 2004-12-27 |  | 50d |  |  | Brian | 112h |
| 100 | 1.3.4.2.3.1 | Perform Testing | 3d | 2004-12-17 | 2004-12-21 | 98 | 50d | 0d | start no earlier than 2004-12-15 | Brian | 24h |
| 101 | 1.3.4.2.3.2 | Evaluate Results | 2d | 2004-12-22 | 2004-12-23 | 100 | 50d | 0d |  | Brian | 16h |
| 102 | 1.3.4.2.3.3 | Integration Testing | 1d | 2004-12-24 | 2004-12-24 | 101 | 50d | 0d |  | Brian | 8h |
| 103 | 1.3.4.2.3.4 | User Working Group Review | 1d | 2004-12-27 | 2004-12-27 | 102 | 50d |  |  | Brian | 8h |
| 104 | 1.3.4.2.4 | User Guide | 10d | 2005-01-03 | 2005-01-14 |  | 36d |  | start no earlier than 2005-01-03 | Brian | 80h |
| 105 | 1.4 | **Transition** | 41d | 2005-01-10 | 2005-03-07 |  | 0d |  |  |  |  |
| 106 | 1.4.1 | **Iteration I** | 27d | 2005-01-10 | 2005-02-15 |  | 14d |  |  |  |  |
| 107 | 1.4.1.1 | System Integration Document | 12d | 2005-01-10 | 2005-01-25 |  | 21d | 0d | start no earlier than 2005-01-10 |  |  |
| 108 | 1.4.1.2 | caCore Technical Guide | 8d | 2005-01-26 | 2005-02-04 | 107 | 21d |  |  |  |  |
| 109 | 1.4.1.3 | **Integration Pilot (Release One)** | 25d | 2005-01-12 | 2005-02-15 |  | 14d |  |  |  |  |
| 110 | 1.4.1.3.1 | **Client Implementation** | 9d | 2005-01-12 | 2005-01-24 |  | 30d |  |  |  |  |
| 111 | 1.4.1.3.1.1 | Design | 2d | 2005-01-12 | 2005-01-13 |  | 30d | 0d | start no earlier than 2005-01-12 |  |  |
| 112 | 1.4.1.3.1.2 | Development | 5d | 2005-01-14 | 2005-01-20 | 111 | 30d | 0d |  |  |  |
| 113 | 1.4.1.3.1.3 | Testing | 2d | 2005-01-21 | 2005-01-24 | 112 | 30d |  |  |  |  |
| 114 | 1.4.1.3.2 | Integration Testing | 10d | 2005-01-25 | 2005-02-07 |  | 14d | 0d | start no earlier than 2005-01-25 |  |  |
| 115 | 1.4.1.3.3 | Evaluate Results | 1d | 2005-02-08 | 2005-02-08 | 114 | 14d | 0d |  |  |  |
| 116 | 1.4.1.3.4 | Apply Needed Enhancements | 5d | 2005-02-09 | 2005-02-15 | 115 | 14d |  |  |  |  |

| ID | WBS | Task | Duration | Start | Finish | Total slack | Constraint |
| --- | --- | --- | --- | --- | --- | --- | --- |
| 117 | 1.4.2 | **Iteration II** | 10d | 2005-02-15 | 2005-02-28 | 5d |  |
| 118 | 1.4.2.1 | Staging | 5d | 2005-02-15 | 2005-02-21 | 10d | start no earlier than 2005-02-15 |
| 119 | 1.4.2.2 | Testing | 6d | 2005-02-21 | 2005-02-28 | 5d | start no earlier than 2005-02-21 |
| 120 | 1.4.3 | caCore Release 3 | 1d | 2005-03-07 | 2005-03-07 | 0d | start no earlier than 2005-03-07 |
